# Northgate Distribution Center

Schedule from Primavera P6, 2026-03-02 to 2027-06-09, data date 2026-09-07, costs in USD, A marks actual dates.
Must finish by 2027-05-07

## Resources

| Resource | Group |
| --- | --- |
| Labor | labor |
| Materials and equipment | material |
| Subcontract | equipment |

## Schedule

| ID | WBS | Activity | Type | Duration | Start | Finish | Predecessors | Complete | Remaining | Planned start | Planned finish | Total float | Resources | Cost | Actual cost |
| --- | --- | --- | --- | --- | --- | --- | --- | --- | --- | --- | --- | --- | --- | --- | --- |
|  | PM | **Project Management & Preconstruction** |  |  | 2026-03-02 | 2026-07-28 |  |  |  |  |  |  |  |  |  |
| A1010 |  | Design development review |  | 15d | 2026-03-02 A | 2026-03-20 A | M1000 | 100% |  |  |  |  | Labor [120 h] | 185,000 | 188,700 |
| M1000 |  | Notice to proceed | milestone | 0d | 2026-03-02 A | 2026-03-02 A |  | 100% |  |  |  |  |  |  |  |
| A1020 |  | Building permit approval |  | 25d | 2026-03-23 A | 2026-05-08 A | A1010 | 100% |  | 2026-03-23 | 2026-04-24 |  | Labor [200 h] | 42,000 | 46,200 |
| A1030 |  | Procure structural steel |  | 60d | 2026-03-23 A | 2026-06-26 A | A1010 | 100% |  | 2026-03-23 | 2026-06-12 |  | Materials and equipment [480] | 3,850,000 | 4,158,000 |
| A1040 |  | Procure conveyor and sortation system |  | 90d | 2026-03-23 A | 2026-07-24 A | A1010 | 100% |  |  |  |  | Materials and equipment [720] | 6,400,000 | 6,400,000 |
| A1050 |  | Procure selective racking |  | 50d | 2026-03-23 A | 2026-06-05 A | A1010 | 100% |  | 2026-03-23 | 2026-05-29 |  | Materials and equipment [400] | 2,150,000 | 2,214,500 |
| A1060 |  | Procure switchgear and electrical gear |  | 80d | 2026-03-23 A | 2026-07-28 A | A1010 | 100% |  | 2026-03-23 | 2026-07-10 |  | Materials and equipment [640] | 1,650,000 | 1,732,500 |
| A1070 |  | Procure dock levelers and overhead doors |  | 45d | 2026-03-23 A | 2026-05-22 A | A1010 | 100% |  |  |  |  | Materials and equipment [360] | 780,000 | 780,000 |
|  | SITE | **Sitework** |  |  | 2026-05-11 | 2027-01-22 |  |  |  |  |  |  |  |  |  |
| A2010 |  | Mobilization |  | 5d | 2026-05-11 A | 2026-05-15 A | A1020 | 100% |  | 2026-04-27 | 2026-05-01 |  | Subcontract [40 h] | 160,000 | 160,000 |
| A2020 |  | Clearing and grubbing |  | 10d | 2026-05-18 A | 2026-05-29 A | A2010 | 100% |  | 2026-05-04 | 2026-05-15 |  | Subcontract [80 h] | 240,000 | 230,400 |
| A2030 |  | Mass excavation and grading |  | 20d | 2026-06-01 A | 2026-07-06 A | A2020 | 100% |  | 2026-05-18 | 2026-06-12 |  | Subcontract [160 h] | 1,250,000 | 1,550,000 |
| A2040 |  | Underground utilities |  | 25d | 2026-06-15 A | 2026-07-21 A | A2030 SS+10d | 100% |  | 2026-06-01 | 2026-07-03 |  | Subcontract [200 h] | 980,000 | 1,038,800 |
| A2050 |  | Stormwater detention pond |  | 20d | 2026-07-07 A | 2026-08-03 A | A2030 | 100% |  | 2026-06-15 | 2026-07-10 |  | Subcontract [160 h] | 520,000 | 530,400 |
| A2060 |  | Paving and truck court |  | 30d | 2026-11-23 | 2027-01-01 | A3060 |  |  | 2026-10-28 | 2026-12-08 | 45d | Subcontract [240 h] | 2,100,000 |  |
| A2070 |  | Site lighting and fencing |  | 15d | 2027-01-04 | 2027-01-22 | A2060 |  |  | 2026-12-09 | 2026-12-29 | 45d | Subcontract [120 h] | 410,000 |  |
|  | FND | **Foundations & Slab** |  |  | 2026-07-07 | 2026-11-20 |  |  |  |  |  |  |  |  |  |
| A3010 |  | Building pad and compaction |  | 10d | 2026-07-07 A | 2026-07-21 A | A2030 | 100% |  | 2026-06-15 | 2026-06-26 |  | Subcontract [80 h] | 380,000 | 399,000 |
| A3020 |  | Spread footings and piers |  | 20d | 2026-07-22 A | 2026-08-19 A | A3010 | 100% |  | 2026-06-29 | 2026-07-24 |  | Subcontract [160 h] | 1,150,000 | 1,196,000 |
| A3030 |  | Grade beams |  | 15d | 2026-08-20 A | 2026-09-09 | A3020 | 80% | 3d | 2026-07-27 | 2026-08-14 | 25d | Subcontract [120 h] | 640,000 | 522,240 |
| A3040 |  | Underslab plumbing and electrical |  | 12d | 2026-09-10 | 2026-09-25 | A3030, A2040 |  |  | 2026-08-17 | 2026-09-01 | 25d | Subcontract [96 h] | 450,000 |  |
| A3050 |  | Slab on grade pour sequence |  | 25d | 2026-09-28 | 2026-10-30 | A3040 |  |  | 2026-09-02 | 2026-10-06 | 25d | Subcontract [200 h] | 2,300,000 |  |
| A3060 |  | Dock pits and aprons |  | 15d | 2026-11-02 | 2026-11-20 | A3050 |  |  | 2026-10-07 | 2026-10-27 | 45d | Subcontract [120 h] | 520,000 |  |

| ID | WBS | Activity | Type | Duration | Start | Finish | Predecessors | Complete | Remaining | Planned start | Planned finish | Total float | Resources | Cost | Actual cost |
| --- | --- | --- | --- | --- | --- | --- | --- | --- | --- | --- | --- | --- | --- | --- | --- |
|  | STR | **Structure** |  |  | 2026-08-20 | 2026-10-21 |  |  |  |  |  |  |  |  |  |
| A4010 |  | Erect structural steel |  | 35d | 2026-08-20 A | 2026-10-09 | A3020, A1030 | 29% | 25d | 2026-07-27 | 2026-09-11 | -33d | Subcontract [280 h] | 2,650,000 | 890,400 |
| A4020 |  | Steel joists and deck |  | 20d | 2026-09-03 A | 2026-09-30 | A4010 SS+10d | 10% | 18d | 2026-08-10 | 2026-09-04 | -23d | Subcontract [160 h] | 1,380,000 | 138,000 |
| A4030 |  | Mezzanine steel and stairs |  | 15d | 2026-10-01 | 2026-10-21 | A4020 |  |  | 2026-09-07 | 2026-09-25 | -13d | Subcontract [120 h] | 520,000 |  |
|  | ENV | **Building Envelope** |  |  | 2026-09-10 | 2026-12-11 |  |  |  |  |  |  |  |  |  |
| A5020 |  | Insulated metal wall panels |  | 30d | 2026-09-10 | 2026-10-21 | A4010 SS+15d |  |  | 2026-08-17 | 2026-09-25 | -13d | Subcontract [240 h] | 2,450,000 |  |
| A5010 |  | Roofing membrane and insulation |  | 25d | 2026-10-01 | 2026-11-04 | A4020 |  |  | 2026-09-07 | 2026-10-09 | -23d | Subcontract [200 h] | 2,250,000 |  |
| A5040 |  | Storefront and office glazing |  | 10d | 2026-10-22 | 2026-11-04 | A5020 |  |  | 2026-09-28 | 2026-10-09 | 102d |  |  |  |
| M5050 |  | Building dried in | milestone | 0d | 2026-11-04 | 2026-11-04 | A5010, A5020 |  |  | 2026-10-09 | 2026-10-09 | -23d |  |  |  |
| A5030 |  | Install overhead doors and dock levelers |  | 15d | 2026-11-23 | 2026-12-11 | A5020 FS-3d, A1070, A3060 |  |  | 2026-10-28 | 2026-11-17 | 75d | Subcontract [120 h] | 310,000 |  |
|  | MEP | **MEP Systems** |  |  | 2026-11-05 | 2027-01-20 |  |  |  |  |  |  |  |  |  |
| A6010 |  | Install electrical service and switchgear |  | 20d | 2026-11-05 | 2026-12-02 | A1060, M5050 |  |  | 2026-10-12 | 2026-11-06 | 2d | Subcontract [160 h] | 690,000 |  |
| A6020 |  | Lighting and branch power |  | 35d | 2026-11-05 | 2026-12-23 | M5050 |  |  | 2026-10-12 | 2026-11-27 | 2d | Subcontract [280 h] | 1,450,000 |  |
| A6030 |  | ESFR fire sprinkler system |  | 40d | 2026-11-05 | 2026-12-30 | M5050 |  |  | 2026-10-12 | 2026-12-04 | -18d | Subcontract [320 h] | 1,720,000 |  |
| A6040 |  | HVAC rooftop units and ductwork |  | 30d | 2026-11-05 | 2026-12-16 | M5050 |  |  | 2026-10-12 | 2026-11-20 | 27d | Subcontract [240 h] | 1,180,000 |  |
| M6070 |  | Permanent power energized | milestone | 0d | 2026-12-02 | 2026-12-02 | A6010 |  |  | 2026-11-06 | 2026-11-06 | 2d |  |  |  |
| A6050 |  | Plumbing fixtures and office MEP |  | 20d | 2026-12-17 | 2027-01-13 | A6040 |  |  | 2026-11-23 | 2026-12-18 | 27d | Subcontract [160 h] | 520,000 |  |
| A6060 |  | Fire alarm system |  | 20d | 2026-12-24 | 2027-01-20 | A6020 |  |  | 2026-11-30 | 2026-12-25 | 22d | Subcontract [160 h] | 380,000 |  |
|  | MHE | **Material Handling Automation** |  |  | 2026-11-05 | 2027-02-17 |  |  |  |  |  |  |  |  |  |
| A7020 |  | Install conveyor system |  | 40d | 2026-11-05 | 2026-12-30 | A1040, M5050, A4030 |  |  | 2026-10-12 | 2026-12-04 | -23d | Subcontract [320 h] | 2,350,000 |  |
| A7040 |  | Install AS/RS shuttle system |  | 60d | 2026-11-05 | 2027-01-27 | M5050 |  |  | 2026-10-12 | 2027-01-01 | -8d | Subcontract [480 h] | 5,200,000 |  |
| A7030 |  | Install sortation and scanning |  | 25d | 2026-12-03 | 2027-01-06 | A7020 SS+20d |  |  | 2026-11-09 | 2026-12-11 | -23d | Subcontract [200 h] | 980,000 |  |
| A7010 |  | Install selective racking |  | 30d | 2026-12-31 | 2027-02-10 | A3050, A1050, A6030 |  |  | 2026-12-07 | 2027-01-15 | -18d | Subcontract [240 h] | 820,000 |  |
| A7050 |  | Controls and PLC programming |  | 30d | 2027-01-07 | 2027-02-17 | A7030, M6070 |  |  | 2026-12-14 | 2027-01-22 | -23d | Subcontract [240 h] | 760,000 |  |

| ID | WBS | Activity | Type | Duration | Start | Finish | Predecessors | Complete | Planned start | Planned finish | Total float | Constraint | Resources | Cost | Actual cost |
| --- | --- | --- | --- | --- | --- | --- | --- | --- | --- | --- | --- | --- | --- | --- | --- |
|  | WMS | **WMS & ERP Integration** |  |  | 2026-03-02 | 2027-04-14 |  |  |  |  |  |  |  |  |  |
| A8010 |  | WMS requirements and solution design |  | 30d | 2026-03-02 A | 2026-04-15 A | M1000 | 100% | 2026-03-02 | 2026-04-10 |  |  | Labor [240 h] | 420,000 | 470,400 |
| A8020 |  | WMS configuration and build |  | 45d | 2026-04-16 A | 2026-06-19 A | A8010 | 100% | 2026-04-13 | 2026-06-12 |  |  | Labor [360 h] | 680,000 | 734,400 |
| A8030 |  | Dynamics 365 EDI and API interfaces |  | 40d | 2026-04-16 A | 2026-06-16 A | A8010 | 100% | 2026-04-13 | 2026-06-05 |  |  | Labor [320 h] | 540,000 | 621,000 |
| A8040 |  | Network and wireless infrastructure |  | 20d | 2026-12-24 | 2027-01-20 | A6020 |  | 2026-11-30 | 2026-12-25 | 2d |  | Subcontract [160 h] | 460,000 |  |
| A8050 |  | WMS integration testing |  | 25d | 2027-02-18 | 2027-03-24 | A8020, A8030, A8040, A7050 |  | 2027-01-25 | 2027-02-26 | -18d |  | Subcontract [200 h] | 310,000 |  |
| A8060 |  | Warehouse user training |  | 15d | 2027-03-25 | 2027-04-14 | A8050 |  | 2027-03-01 | 2027-03-19 | 40d |  | Labor [120 h] | 140,000 |  |
|  | CX | **Commissioning & Closeout** |  |  | 2027-01-21 | 2027-06-09 |  |  |  |  |  |  |  |  |  |
| A9010 |  | MEP commissioning |  | 20d | 2027-01-21 | 2027-02-17 | A6050, A6060, M6070 |  | 2026-12-28 | 2027-01-22 | 22d |  | Subcontract [160 h] | 260,000 |  |
| A9020 |  | Fire marshal inspection |  | 5d | 2027-02-18 | 2027-02-24 | A9010, A6030 |  | 2027-01-25 | 2027-01-29 | 22d |  | Subcontract [40 h] | 18,000 |  |
| A9030 |  | Material handling commissioning |  | 30d | 2027-02-18 | 2027-03-31 | A7050, A7010, A7040 |  | 2027-01-25 | 2027-02-26 | -23d |  | Subcontract [240 h] | 420,000 |  |
| A9050 |  | Certificate of occupancy |  | 10d | 2027-02-25 | 2027-03-10 | A9020, A2060, A2070, A5030, A5040 |  | 2027-02-01 | 2027-02-12 | 22d |  | Subcontract [80 h] | 25,000 |  |
| A9040 |  | Integrated operations test |  | 15d | 2027-04-01 | 2027-04-21 | A9030, A8050 |  | 2027-03-01 | 2027-03-19 | -23d |  | Subcontract [120 h] | 190,000 |  |
| A9060 |  | Punch list completion |  | 15d | 2027-04-22 | 2027-05-12 | A9040 |  | 2027-03-22 | 2027-04-09 | -23d |  | Subcontract [120 h] | 210,000 |  |
| M9070 |  | Substantial completion | milestone | 0d | 2027-05-12 | 2027-05-12 | A9050, A9040, A9060 |  | 2027-04-09 | 2027-04-09 | -23d | finish on or before 2027-04-09 |  |  |  |
| A9080 |  | Closeout and turnover documentation |  | 20d | 2027-05-13 | 2027-06-09 | M9070 |  | 2027-04-12 | 2027-05-07 | 0d |  | Labor [160 h] | 95,000 |  |
| M9090 |  | Project complete | milestone | 0d | 2027-06-09 | 2027-06-09 | A9080 |  | 2027-05-07 | 2027-05-07 | 0d |  |  |  |  |
